# ПЗ1_Вариант1_Стандарт

How a schedule from MS Project changed from version to version. A marks actual dates.

## Version 1 (saved 2026-10-11, file ПЗ4_Вариант1.mpp)

| ID | WBS | Task | Duration | Start | Finish | Predecessors | Total float | Constraint |
| --- | --- | --- | --- | --- | --- | --- | --- | --- |
| 1 |  | Начало проекта | 0d | 2026-10-05 | 2026-10-05 |  | 0d |  |
| 2 | 2 | **Утверждение проектов** | 101d | 2026-10-05 | 2027-02-25 |  | 0d |  |
| 3 |  | Начало утверждения проектов | 1d | 2026-10-05 | 2026-10-05 | 1 | 0d |  |
| 4 |  | Утверждение проекта на строительство | 90d | 2026-10-06 | 2027-02-11 | 3 | 10d |  |
| 5 |  | Утверждение проекта на газ | 100d | 2026-10-06 | 2027-02-25 | 3 | 0d |  |
| 6 |  | Утверждение проекта на водопровод и канализацию | 60d | 2026-10-06 | 2026-12-29 | 3 | 40d |  |
| 7 |  | Утверждение проета на отопление | 90d | 2026-10-06 | 2027-02-11 | 3 | 10d |  |
| 8 |  | Проекты утверждены | 0d | 2027-02-25 | 2027-02-25 | 4, 5, 6, 7 | 0d |  |
| 9 | 3 | **Строительство фундамента** | 47d | 2027-02-26 | 2027-05-06 |  | 0d |  |
| 10 |  | Начало закладки фундамента | 2d | 2027-02-26 | 2027-03-01 | 8 | 0d |  |
| 11 |  | Рытье траншей | 10d | 2027-03-02 | 2027-03-16 | 10 | 0d |  |
| 12 |  | Заливка фундамента | 5d | 2027-03-17 | 2027-03-23 | 11 | 0d |  |
| 13 |  | Фундамент завершен | 0d | 2027-05-06 | 2027-05-06 | 12FS+30d | 0d |  |
| 14 | 4 | **Каркас и крыша** | 106d | 2027-05-07 | 2027-10-01 |  | 0d |  |
| 15 |  | Начало каркаса | 1d | 2027-05-07 | 2027-05-07 | 13 | 0d |  |
| 16 |  | Кладка стен | 60d | 2027-05-10 | 2027-07-30 | 15 | 0d |  |
| 17 |  | Перекрытие стен | 15d | 2027-08-02 | 2027-08-20 | 16 | 0d |  |
| 18 |  | Установка крыши | 30d | 2027-08-23 | 2027-10-01 | 17 | 0d |  |
| 19 |  | Установка наружных дверей и окон | 7d | 2027-08-23 | 2027-08-31 | 17 | 23d |  |
| 20 |  | Установка полов | 5d | 2027-08-23 | 2027-08-27 | 17 | 25d |  |
| 21 |  | Каркас готов | 0d | 2027-10-01 | 2027-10-01 | 18, 19, 20 | 0d |  |
| 22 | 5 | **Коммуникации** | 11d | 2027-10-04 | 2027-10-18 |  | 0d |  |
| 23 |  | Начало установки коммуникаций | 1d | 2027-10-04 | 2027-10-04 | 21 | 0d |  |
| 24 |  | Проведение и подключение водопровода и канализации | 10d | 2027-10-05 | 2027-10-18 | 23 | 0d |  |
| 25 |  | Установка и подключение электропроводки | 5d | 2027-10-05 | 2027-10-11 | 23 | 5d |  |
| 26 |  | Установка и подключение газовых коммуникаций | 5d | 2027-10-05 | 2027-10-11 | 23 | 5d |  |
| 27 |  | Коммуникации готовы | 0d | 2027-10-18 | 2027-10-18 | 24, 25, 26 | 0d |  |
| 28 | 6 | **Внутренняя отделка** | 40d | 2027-10-18 | 2027-12-13 |  | 0d |  |
| 29 |  | Начало отделки | 0d | 2027-10-18 | 2027-10-18 | 27 | 0d |  |
| 30 |  | Внутренние двери | 10d | 2027-10-19 | 2027-11-01 | 29 | 0d |  |
| 31 |  | Навесные потолки | 5d | 2027-11-02 | 2027-11-08 | 30 | 5d |  |
| 32 |  | Отделка стен | 3d | 2027-11-18 | 2027-11-22 | 30 | 0d | as late as possible |
| 33 |  | Монтаж отопления | 10d | 2027-11-02 | 2027-11-15 | 30 | 0d |  |
| 34 |  | Установка оборудования, приборов, сантехники | 5d | 2027-11-16 | 2027-11-22 | 31, 33 | 0d |  |
| 35 |  | Настил полов | 15d | 2027-11-23 | 2027-12-13 | 32, 34 | 0d |  |
| 36 |  | Конец отделки | 0d | 2027-12-13 | 2027-12-13 | 35 | 0d |  |
| 37 |  | Конец проекта | 0d | 2027-12-13 | 2027-12-13 | 36 | 0d |  |

## Version 2 (saved 2026-11-08, file Процент.mpp)

Last finish stays 2027-12-13. Complete tasks 0 → 2.

Changed:

| ID | Task | Start | Finish | Complete | Total float |
| --- | --- | --- | --- | --- | --- |
| 2 | **Утверждение проектов** | 2026-10-05 A |  | 0% → 38% |  |
| 3 | Начало утверждения проектов | 2026-10-05 A | 2026-10-05 A | 0% → 100% | 0d → none |
| 4 | Утверждение проекта на строительство | 2026-10-06 A |  | 0% → 50% |  |
| 5 | Утверждение проекта на газ | 2026-10-06 A |  | 0% → 25% |  |
| 6 | Утверждение проекта на водопровод и канализацию | 2026-10-06 A | 2026-12-29 A | 0% → 100% | 40d → none |

## Version 3 (saved 2026-11-08, file Факт.mpp)

Last finish 2027-12-13 → 2027-12-15 (+2d). Complete tasks 2 → 1.

Changed:

| ID | Task | Start | Finish | Duration | Complete | Total float |
| --- | --- | --- | --- | --- | --- | --- |
| 2 | **Утверждение проектов** | 2026-10-05 A → 2026-10-05 |  |  | 38% → 0% | 0d → 204d |
| 3 | Начало утверждения проектов | 2026-10-05 A → 2026-10-05 | 2026-10-05 A → 2026-10-05 |  | 100% → 0% | none → 204d |
| 4 | Утверждение проекта на строительство | 2026-10-06 A → 2026-10-06 |  |  | 50% → 0% |  |
| 5 | Утверждение проекта на газ | 2026-10-06 A → 2026-10-06 |  |  | 25% → 0% | 0d → 204d |
| 6 | Утверждение проекта на водопровод и канализацию | 2026-10-06 A → 2026-10-06 | 2026-12-29 A → 2026-12-29 |  | 100% → 0% | none → 40d |
| 9 | **Строительство фундамента** | 2027-02-26 A | 2027-05-06 → 2027-05-10 (+4d) | 47d → 49d | 0% → 59% | 0d → 157d |
| 11 | Рытье траншей | 2027-03-02 A | 2027-03-16 → 2027-03-18 A (+2d) |  | 0% → 100% | 0d → none |
| 12 | Заливка фундамента | 2027-03-17 → 2027-03-19 (+2d) | 2027-03-23 → 2027-03-25 (+2d) |  |  |  |
| 13 | Фундамент завершен | 2027-05-06 → 2027-05-10 (+4d) | 2027-05-06 → 2027-05-10 (+4d) |  |  |  |
| 14 | **Каркас и крыша** | 2027-05-07 → 2027-05-11 (+4d) | 2027-10-01 → 2027-10-05 (+4d) |  |  |  |
| 15 | Начало каркаса | 2027-05-07 → 2027-05-11 (+4d) | 2027-05-07 → 2027-05-11 (+4d) |  |  |  |
| 16 | Кладка стен | 2027-05-10 → 2027-05-12 (+2d) | 2027-07-30 → 2027-08-03 (+4d) |  |  |  |
| 17 | Перекрытие стен | 2027-08-02 → 2027-08-04 (+2d) | 2027-08-20 → 2027-08-24 (+4d) |  |  |  |
| 18 | Установка крыши | 2027-08-23 → 2027-08-25 (+2d) | 2027-10-01 → 2027-10-05 (+4d) |  |  |  |
| 19 | Установка наружных дверей и окон | 2027-08-23 → 2027-08-25 (+2d) | 2027-08-31 → 2027-09-02 (+2d) |  |  |  |
| 20 | Установка полов | 2027-08-23 → 2027-08-25 (+2d) | 2027-08-27 → 2027-08-31 (+4d) |  |  |  |
| 21 | Каркас готов | 2027-10-01 → 2027-10-05 (+4d) | 2027-10-01 → 2027-10-05 (+4d) |  |  |  |
| 22 | **Коммуникации** | 2027-10-04 → 2027-10-06 (+2d) | 2027-10-18 → 2027-10-20 (+2d) |  |  |  |
| 23 | Начало установки коммуникаций | 2027-10-04 → 2027-10-06 (+2d) | 2027-10-04 → 2027-10-06 (+2d) |  |  |  |
| 24 | Проведение и подключение водопровода и канализации | 2027-10-05 → 2027-10-07 (+2d) | 2027-10-18 → 2027-10-20 (+2d) |  |  |  |
| 25 | Установка и подключение электропроводки | 2027-10-05 → 2027-10-07 (+2d) | 2027-10-11 → 2027-10-13 (+2d) |  |  |  |
| 26 | Установка и подключение газовых коммуникаций | 2027-10-05 → 2027-10-07 (+2d) | 2027-10-11 → 2027-10-13 (+2d) |  |  |  |
| 27 | Коммуникации готовы | 2027-10-18 → 2027-10-20 (+2d) | 2027-10-18 → 2027-10-20 (+2d) |  |  |  |
| 28 | **Внутренняя отделка** | 2027-10-18 → 2027-10-20 (+2d) | 2027-12-13 → 2027-12-15 (+2d) |  |  |  |
| 29 | Начало отделки | 2027-10-18 → 2027-10-20 (+2d) | 2027-10-18 → 2027-10-20 (+2d) |  |  |  |
| 30 | Внутренние двери | 2027-10-19 → 2027-10-21 (+2d) | 2027-11-01 → 2027-11-03 (+2d) |  |  |  |
| 31 | Навесные потолки | 2027-11-02 → 2027-11-04 (+2d) | 2027-11-08 → 2027-11-10 (+2d) |  |  |  |
| 32 | Отделка стен | 2027-11-18 → 2027-11-22 (+4d) | 2027-11-22 → 2027-11-24 (+2d) |  |  |  |
| 33 | Монтаж отопления | 2027-11-02 → 2027-11-04 (+2d) | 2027-11-15 → 2027-11-17 (+2d) |  |  |  |
| 34 | Установка оборудования, приборов, сантехники | 2027-11-16 → 2027-11-18 (+2d) | 2027-11-22 → 2027-11-24 (+2d) |  |  |  |
| 35 | Настил полов | 2027-11-23 → 2027-11-25 (+2d) | 2027-12-13 → 2027-12-15 (+2d) |  |  |  |
| 36 | Конец отделки | 2027-12-13 → 2027-12-15 (+2d) | 2027-12-13 → 2027-12-15 (+2d) |  |  |  |
| 37 | Конец проекта | 2027-12-13 → 2027-12-15 (+2d) | 2027-12-13 → 2027-12-15 (+2d) |  |  |  |

## Version 4 (saved 2026-11-08, file Задачи.mpp)

Last finish stays 2027-12-15.

Changed:

| ID | Task | Start | Complete |
| --- | --- | --- | --- |
| 14 | **Каркас и крыша** | 2027-05-11 A | 0% → 4% |
| 16 | Кладка стен | 2027-05-12 A | 0% → 8% |

## Version 5 (saved 2026-11-08, file Ресурсы.mpp)

Last finish stays 2027-12-15.

Changed:

| ID | Task | Start | Finish | Duration | Complete | Total float |
| --- | --- | --- | --- | --- | --- | --- |
| 22 | **Коммуникации** | 2027-10-06 A |  |  | 0% → 26% |  |
| 24 | Проведение и подключение водопровода и канализации | 2027-10-07 A |  |  | 0% → 20% |  |
| 25 | Установка и подключение электропроводки | 2027-10-07 A | 2027-10-13 → 2027-10-14 (+1d) | 5d → 6d | 0% → 33% | 5d → 4d |
| 26 | Установка и подключение газовых коммуникаций | 2027-10-07 A | 2027-10-13 → 2027-10-14 (+1d) | 5d → 6d | 0% → 33% | 5d → 4d |

## Version 6 (saved 2026-11-09, file ПЗ4_Вариант1_Отслеживание_11-10-2027.mpp)

Last finish 2027-12-15 → 2027-12-13 (-2d). Complete tasks 1 → 0.

Changed:

| ID | Task | Start | Finish | Duration | Complete | Total float |
| --- | --- | --- | --- | --- | --- | --- |
| 9 | **Строительство фундамента** | 2027-02-26 A → 2027-02-26 | 2027-05-10 → 2027-05-06 (-4d) | 49d → 47d | 59% → 0% | 157d → 0d |
| 11 | Рытье траншей | 2027-03-02 A → 2027-03-02 | 2027-03-18 A → 2027-03-16 (-2d) |  | 100% → 0% | none → 0d |
| 12 | Заливка фундамента | 2027-03-19 → 2027-03-17 (-2d) | 2027-03-25 → 2027-03-23 (-2d) |  |  | 4.8d → 0d |
| 13 | Фундамент завершен | 2027-05-10 → 2027-05-06 (-4d) | 2027-05-10 → 2027-05-06 (-4d) |  |  | 4.8d → 0d |
| 14 | **Каркас и крыша** | 2027-05-11 A → 2027-05-07 (-4d) | 2027-10-05 → 2027-10-01 (-4d) |  | 4% → 0% | 1d → 0d |
| 15 | Начало каркаса | 2027-05-11 → 2027-05-07 (-4d) | 2027-05-11 → 2027-05-07 (-4d) |  |  | 4.8d → 0d |
| 16 | Кладка стен | 2027-05-12 A → 2027-05-10 (-2d) | 2027-08-03 → 2027-07-30 (-4d) |  | 8% → 0% | 1d → 0d |
| 17 | Перекрытие стен | 2027-08-04 → 2027-08-02 (-2d) | 2027-08-24 → 2027-08-20 (-4d) |  |  | 1d → 0d |
| 18 | Установка крыши | 2027-08-25 → 2027-08-23 (-2d) | 2027-10-05 → 2027-10-01 (-4d) |  |  | 1d → 0d |
| 19 | Установка наружных дверей и окон | 2027-08-25 → 2027-08-23 (-2d) | 2027-09-02 → 2027-08-31 (-2d) |  |  |  |
| 20 | Установка полов | 2027-08-25 → 2027-08-23 (-2d) | 2027-08-31 → 2027-08-27 (-4d) |  |  |  |
| 21 | Каркас готов | 2027-10-05 → 2027-10-01 (-4d) | 2027-10-05 → 2027-10-01 (-4d) |  |  | 1d → 0d |
| 22 | **Коммуникации** | 2027-10-06 A → 2027-10-04 (-2d) | 2027-10-20 → 2027-10-18 (-2d) |  | 26% → 0% |  |
| 23 | Начало установки коммуникаций | 2027-10-06 → 2027-10-04 (-2d) | 2027-10-06 → 2027-10-04 (-2d) |  |  | 1d → 0d |
| 24 | Проведение и подключение водопровода и канализации | 2027-10-07 A → 2027-10-05 (-2d) | 2027-10-20 → 2027-10-18 (-2d) |  | 20% → 0% |  |
| 25 | Установка и подключение электропроводки | 2027-10-07 A → 2027-10-05 (-2d) | 2027-10-14 → 2027-10-11 (-3d) | 6d → 5d | 33% → 0% | 4d → 5d |
| 26 | Установка и подключение газовых коммуникаций | 2027-10-07 A → 2027-10-05 (-2d) | 2027-10-14 → 2027-10-11 (-3d) | 6d → 5d | 33% → 0% | 4d → 5d |
| 27 | Коммуникации готовы | 2027-10-20 → 2027-10-18 (-2d) | 2027-10-20 → 2027-10-18 (-2d) |  |  |  |
| 28 | **Внутренняя отделка** | 2027-10-20 → 2027-10-18 (-2d) | 2027-12-15 → 2027-12-13 (-2d) |  |  |  |
| 29 | Начало отделки | 2027-10-20 → 2027-10-18 (-2d) | 2027-10-20 → 2027-10-18 (-2d) |  |  |  |
| 30 | Внутренние двери | 2027-10-21 → 2027-10-19 (-2d) | 2027-11-03 → 2027-11-01 (-2d) |  |  |  |
| 31 | Навесные потолки | 2027-11-04 → 2027-11-02 (-2d) | 2027-11-10 → 2027-11-08 (-2d) |  |  |  |
| 32 | Отделка стен | 2027-11-22 → 2027-11-18 (-4d) | 2027-11-24 → 2027-11-22 (-2d) |  |  |  |
| 33 | Монтаж отопления | 2027-11-04 → 2027-11-02 (-2d) | 2027-11-17 → 2027-11-15 (-2d) |  |  |  |
| 34 | Установка оборудования, приборов, сантехники | 2027-11-18 → 2027-11-16 (-2d) | 2027-11-24 → 2027-11-22 (-2d) |  |  |  |
| 35 | Настил полов | 2027-11-25 → 2027-11-23 (-2d) | 2027-12-15 → 2027-12-13 (-2d) |  |  |  |
| 36 | Конец отделки | 2027-12-15 → 2027-12-13 (-2d) | 2027-12-15 → 2027-12-13 (-2d) |  |  |  |
| 37 | Конец проекта | 2027-12-15 → 2027-12-13 (-2d) | 2027-12-15 → 2027-12-13 (-2d) |  |  |  |

## Version 7 (saved 2026-11-23, file Строительство_дома_база.mpp)

Last finish 2027-12-13 → 2028-01-03 (+21d). Complete tasks 0 → 3.

Changed:

| ID | Task | Start | Finish | Duration | Complete | Total float | Other |
| --- | --- | --- | --- | --- | --- | --- | --- |
| 1 | Начало проекта |  |  |  |  | 0d → 320d | baseline start none → 2026-10-05; baseline finish none → 2026-10-05 |
| 2 | **Утверждение проектов** | 2026-10-05 A |  |  | 0% → 38% | 0d → 217d | baseline start none → 2026-10-05; baseline finish none → 2027-02-25 |
| 3 | Начало утверждения проектов | 2026-10-05 A | 2026-10-05 A |  | 0% → 100% | 0d → none | baseline start none → 2026-10-05; baseline finish none → 2026-10-05 |
| 4 | Утверждение проекта на строительство | 2026-10-06 A |  |  | 0% → 50% | 10d → 227d | baseline start none → 2026-10-06; baseline finish none → 2027-02-11 |
| 5 | Утверждение проекта на газ | 2026-10-06 A |  |  | 0% → 25% | 0d → 217d | baseline start none → 2026-10-06; baseline finish none → 2027-02-25 |
| 6 | Утверждение проекта на водопровод и канализацию | 2026-10-06 A | 2026-12-29 A |  | 0% → 100% | 40d → none | baseline start none → 2026-10-06; baseline finish none → 2026-12-29 |
| 7 | Утверждение проета на отопление |  |  |  |  | 10d → 227d | baseline start none → 2026-10-06; baseline finish none → 2027-02-11 |
| 8 | Проекты утверждены |  |  |  |  | 0d → 217d | baseline start none → 2027-02-25; baseline finish none → 2027-02-25 |
| 9 | **Строительство фундамента** | 2027-02-26 A |  |  | 0% → 59% | 0d → 172d | baseline start none → 2027-02-26; baseline finish none → 2027-05-06 |
| 10 | Начало закладки фундамента |  |  |  |  | 0d → 217d | baseline start none → 2027-02-26; baseline finish none → 2027-03-01 |
| 11 | Рытье траншей | 2027-03-02 A | 2027-03-16 A |  | 0% → 100% | 0d → none | baseline start none → 2027-03-02; baseline finish none → 2027-03-16 |
| 12 | Заливка фундамента |  |  |  |  | 0d → 20d | baseline start none → 2027-03-17; baseline finish none → 2027-03-23 |
| 13 | Фундамент завершен |  |  |  |  | 0d → 20d | baseline start none → 2027-05-06; baseline finish none → 2027-05-06 |
| 14 | **Каркас и крыша** | 2027-05-07 A | 2027-10-01 → 2027-10-22 (+21d) | 106d → 121d | 0% → 4% | 0d → 1d | baseline start none → 2027-05-07; baseline finish none → 2027-10-01 |
| 15 | Начало каркаса |  |  |  |  | 0d → 20d | baseline start none → 2027-05-07; baseline finish none → 2027-05-07 |
| 16 | Кладка стен | 2027-05-10 A | 2027-07-30 → 2027-08-20 (+21d) |  | 0% → 8% | 0d → 1d | baseline start none → 2027-05-10; baseline finish none → 2027-07-30 |
| 17 | Перекрытие стен | 2027-08-02 → 2027-08-23 (+21d) | 2027-08-20 → 2027-09-10 (+21d) |  |  | 0d → 1d | baseline start none → 2027-08-02; baseline finish none → 2027-08-20 |
| 18 | Установка крыши | 2027-08-23 → 2027-09-13 (+21d) | 2027-10-01 → 2027-10-22 (+21d) |  |  | 0d → 1d | baseline start none → 2027-08-23; baseline finish none → 2027-10-01 |
| 19 | Установка наружных дверей и окон | 2027-08-23 → 2027-09-13 (+21d) | 2027-08-31 → 2027-09-21 (+21d) |  |  | 23d → 24d | baseline start none → 2027-08-23; baseline finish none → 2027-08-31 |
| 20 | Установка полов | 2027-08-23 → 2027-09-13 (+21d) | 2027-08-27 → 2027-09-17 (+21d) |  |  | 25d → 26d | baseline start none → 2027-08-23; baseline finish none → 2027-08-27 |
| 21 | Каркас готов | 2027-10-01 → 2027-10-22 (+21d) | 2027-10-01 → 2027-10-22 (+21d) |  |  | 0d → 1d | baseline start none → 2027-10-01; baseline finish none → 2027-10-01 |
| 22 | **Коммуникации** | 2027-10-04 → 2027-10-25 A (+21d) | 2027-10-18 → 2027-11-08 (+21d) |  | 0% → 29% |  | baseline start none → 2027-10-04; baseline finish none → 2027-10-18 |
| 23 | Начало установки коммуникаций | 2027-10-04 → 2027-10-25 (+21d) | 2027-10-04 → 2027-10-25 (+21d) |  |  | 0d → 1d | baseline start none → 2027-10-04; baseline finish none → 2027-10-04 |
| 24 | Проведение и подключение водопровода и канализации | 2027-10-05 → 2027-10-26 A (+21d) | 2027-10-18 → 2027-11-08 (+21d) |  | 0% → 20% |  | baseline start none → 2027-10-05; baseline finish none → 2027-10-18 |
| 25 | Установка и подключение электропроводки | 2027-10-05 → 2027-10-26 A (+21d) | 2027-10-11 → 2027-11-01 (+21d) |  | 0% → 40% |  | baseline start none → 2027-10-05; baseline finish none → 2027-10-11 |
| 26 | Установка и подключение газовых коммуникаций | 2027-10-05 → 2027-10-26 A (+21d) | 2027-10-11 → 2027-11-01 (+21d) |  | 0% → 40% |  | baseline start none → 2027-10-05; baseline finish none → 2027-10-11 |
| 27 | Коммуникации готовы | 2027-10-18 → 2027-11-08 (+21d) | 2027-10-18 → 2027-11-08 (+21d) |  |  |  | baseline start none → 2027-10-18; baseline finish none → 2027-10-18 |
| 28 | **Внутренняя отделка** | 2027-10-18 → 2027-11-08 (+21d) | 2027-12-13 → 2028-01-03 (+21d) |  |  |  | baseline start none → 2027-10-18; baseline finish none → 2027-12-13 |
| 29 | Начало отделки | 2027-10-18 → 2027-11-08 (+21d) | 2027-10-18 → 2027-11-08 (+21d) |  |  |  | baseline start none → 2027-10-18; baseline finish none → 2027-10-18 |
| 30 | Внутренние двери | 2027-10-19 → 2027-11-09 (+21d) | 2027-11-01 → 2027-11-22 (+21d) |  |  |  | baseline start none → 2027-10-19; baseline finish none → 2027-11-01 |
| 31 | Навесные потолки | 2027-11-02 → 2027-11-23 (+21d) | 2027-11-08 → 2027-11-29 (+21d) |  |  |  | baseline start none → 2027-11-02; baseline finish none → 2027-11-08 |
| 32 | Отделка стен | 2027-11-18 → 2027-12-09 (+21d) | 2027-11-22 → 2027-12-13 (+21d) |  |  |  | baseline start none → 2027-11-18; baseline finish none → 2027-11-22 |
| 33 | Монтаж отопления | 2027-11-02 → 2027-11-23 (+21d) | 2027-11-15 → 2027-12-06 (+21d) |  |  |  | baseline start none → 2027-11-02; baseline finish none → 2027-11-15 |
| 34 | Установка оборудования, приборов, сантехники | 2027-11-16 → 2027-12-07 (+21d) | 2027-11-22 → 2027-12-13 (+21d) |  |  |  | baseline start none → 2027-11-16; baseline finish none → 2027-11-22 |
| 35 | Настил полов | 2027-11-23 → 2027-12-14 (+21d) | 2027-12-13 → 2028-01-03 (+21d) |  |  |  | baseline start none → 2027-11-23; baseline finish none → 2027-12-13 |
| 36 | Конец отделки | 2027-12-13 → 2028-01-03 (+21d) | 2027-12-13 → 2028-01-03 (+21d) |  |  |  | baseline start none → 2027-12-13; baseline finish none → 2027-12-13 |
| 37 | Конец проекта | 2027-12-13 → 2028-01-03 (+21d) | 2027-12-13 → 2028-01-03 (+21d) |  |  |  | baseline start none → 2027-12-13; baseline finish none → 2027-12-13 |
